# 1

Schedule from MS Project, 2024-04-01 to 2024-05-23, status date 2024-05-01, costs in ₽, A marks actual dates.

## Calendars

- Стандартный: Mon-Fri 09:00-13:00, 14:00-18:00; Sat-Sun off. Exceptions (off unless hours are given): 2024-04-27 09:00-13:00, 14:00-18:00 (Рабочий), 2024-04-29 to 2024-05-01 (Выходной), 2024-05-08 09:00-13:00, 14:00-17:00 (Сокращенный), 2024-05-09 to 2024-05-10 (Выходной).

## Resources

| Resource | Unit | Rate | Cost per use | Notes |
| --- | --- | --- | --- | --- |
| Соколов |  | 437.5 |  | Ведущий программист |
| Соломин |  | 343.75 |  |  |
| Тимофеев |  | 312.5 |  |  |
| Яковлева |  | 625 |  |  |
| Петров |  | 468.75 |  | Руководитель дизайнерской группы |
| Кузнецов |  | 312.5 |  |  |
| Фомина |  | 250 |  |  |
| Преподаватели |  | 87.5 |  |  |
| Программное обеспечение |  | 30000 | 5000 |  |
| Картриджи для принтера |  | 2500 |  |  |
| Бумага | пач | 200 |  |  |

## Schedule

| ID | WBS | Task | Type | Duration | Start | Finish | Predecessors | Complete | Remaining | Baseline start | Baseline finish | Baseline duration | Total slack | Free slack | Constraint | Resources | Work | Actual work | Cost | Baseline cost | Actual cost |
| --- | --- | --- | --- | --- | --- | --- | --- | --- | --- | --- | --- | --- | --- | --- | --- | --- | --- | --- | --- | --- | --- |
| 1 | 1 | Начало проекта | milestone | 0d | 2024-04-01 A | 2024-04-01 A |  | 100% |  | 2024-04-01 | 2024-04-01 | 0d |  |  |  |  |  |  |  |  |  |
| 2 | 2 | Установка ПО |  | 4.17d | 2024-04-02 A | 2024-04-08 A | 1FS+1d | 100% |  | 2024-04-02 | 2024-04-08 | 4.17d |  |  |  | Программное обеспечение; Соколов; Тимофеев; Яковлева; Соломин | 120h | 120h | 86,458.36 | 76,041.67 | 86,458.36 |
| 3 | 3 | Обучение персонала |  | 16.79d | 2024-04-08 A | 2024-05-02 | 2 | 70% | 5.04d | 2024-04-08 | 2024-05-02 | 16.79d | -7d | 0d | start no earlier than 2024-04-08 | Преподаватели [300%]; Соломин; Тимофеев; Петров; Кузнецов; Яковлева; Картриджи для принтера; Бумага [0.02 пач]; Соколов | 1201h | 846.3h | 370,802.5 | 329,240 | 237,960.4 |
| 4 | 4 | **Разработка представительских сайтов** |  | 12.6d | 2024-04-24 A | 2024-05-16 | 3 | 4% | 12.1d | 2024-05-03 | 2024-05-17 | 8d | 4.4d | 0d |  |  | 80h | 3.2h | 26,000 | 26,000 | 1,040 |
| 5 | 4.1 | **Разработка сайта 1** |  | 9.6d | 2024-04-24 A | 2024-05-13 |  | 8% | 8.83d | 2024-05-03 | 2024-05-14 | 5d | 4.4d | 0d |  |  | 40h | 3.2h | 13,000 | 13,000 | 1,040 |
| 6 | 4.1.1 | Разработка дизайна сайта 1 |  | 2d | 2024-04-24 A | 2024-05-06 |  | 20% | 1.6d | 2024-05-03 | 2024-05-06 | 2d | 4.4d | 0d |  | Кузнецов | 16h | 3.2h | 5,000 | 5,000 | 1,000 |
| 7 | 4.1.2 | Программирование сайта 1 |  | 3d | 2024-05-06 | 2024-05-13 | 6 |  |  | 2024-05-07 | 2024-05-14 | 3d | 4.4d |  |  | Тимофеев | 24h |  | 7,500 | 7,500 |  |
| 8 | 4.2 | **Разработка сайта 2** |  | 5d | 2024-05-07 | 2024-05-16 | 5FS-2d |  |  | 2024-05-08 | 2024-05-17 | 5d | 4.4d |  |  |  | 40h |  | 13,000 | 13,000 |  |
| 9 | 4.2.1 | Разработка дизайна сайта 2 |  | 2d | 2024-05-07 | 2024-05-13 |  |  |  | 2024-05-08 | 2024-05-14 | 2d | 4.4d | 0d |  | Кузнецов | 16h |  | 5,000 | 5,000 |  |
| 10 | 4.2.2 | Программирование сайта 2 |  | 3d | 2024-05-13 | 2024-05-16 | 9 |  |  | 2024-05-14 | 2024-05-17 | 3d | 4.4d |  |  | Тимофеев | 24h |  | 7,500 | 7,500 |  |
| 11 | 5 | Представительские сайты созданы | milestone | 0d | 2024-05-16 | 2024-05-16 | 4 |  |  | 2024-05-17 | 2024-05-17 | 0d | 4.4d |  |  |  |  |  |  |  |  |
| 12 | 6 | **Разработка корпоративного сайта** |  | 19d | 2024-04-22 A | 2024-05-23 | 3 | 14% | 16.29d | 2024-05-03 | 2024-05-27 | 14.5d | 0d |  |  |  | 424h | 40h | 190,750 | 167,000 | 18,125 |
| 13 | 6.1 | Проектирование сайта |  | 5d | 2024-04-22 A | 2024-05-07 |  | 50% | 2.5d | 2024-05-03 | 2024-05-14 | 5d | 0d |  |  | Петров; Соколов | 80h | 40h | 36,250 | 36,250 | 18,125 |
| 14 | 6.2 | Программирование сайта |  | 7.5d | 2024-05-07 | 2024-05-21 | 13 |  |  | 2024-05-14 | 2024-05-23 | 7.5d | 0d |  |  | Соломин; Яковлева; Соколов; Петров | 240h |  | 113,500 | 94,750 |  |
| 15 | 6.3 | Наполнение сайта |  | 3d | 2024-05-16 | 2024-05-21 | 14FS-3d |  |  | 2024-05-20 | 2024-05-23 | 3d | 0d |  |  | Фомина | 24h |  | 6,000 | 6,000 |  |
| 16 | 6.4 | Тестирование сайта |  | 2d | 2024-05-21 | 2024-05-23 | 15 |  |  | 2024-05-23 | 2024-05-27 | 2d | 0d |  |  | Соломин; Яковлева; Петров; Соколов; Тимофеев | 80h |  | 35,000 | 30,000 |  |
| 17 | 7 | Сдача сайта заказчику | milestone | 0d | 2024-05-23 | 2024-05-23 | 16 |  |  | 2024-05-27 | 2024-05-27 | 0d | 0d |  |  |  |  |  |  |  |  |
