# 1

Schedule from MS Project, 2024-04-01 to 2024-07-03, costs in ₽.

## Calendars

- Стандартный: Mon-Fri 09:00-13:00, 14:00-18:00; Sat-Sun off. Exceptions (off unless hours are given): 2024-04-27 09:00-13:00, 14:00-18:00 (Рабочий), 2024-04-29 to 2024-05-01 (Выходной), 2024-05-08 09:00-13:00, 14:00-17:00 (Сокращенный), 2024-05-09 to 2024-05-10 (Выходной), 2024-06-11 09:00-13:00, 14:00-17:00 (Сокращенный), 2024-06-12 (Выходной).

## Resources

| Resource | Unit | Rate | Cost per use | Notes |
| --- | --- | --- | --- | --- |
| Соколов |  | 437.5 |  | Ведущий программист |
| Соломин |  | 343.75 |  |  |
| Тимофеев |  | 312.5 |  |  |
| Яковлева |  | 312.5 |  |  |
| Петров |  | 468.75 |  | Руководитель дизайнерской группы |
| Кузнецов |  | 312.5 |  |  |
| Фомина |  | 250 |  |  |
| Преподаватели |  | 87.5 |  |  |
| Программное обеспечение |  | 30000 | 5000 |  |
| Картриджи для принтера |  | 2500 |  |  |
| Бумага | пач | 200 |  |  |

## Schedule

| ID | WBS | Task | Type | Duration | Start | Finish | Predecessors | Total slack | Free slack | Resources | Work | Cost |
| --- | --- | --- | --- | --- | --- | --- | --- | --- | --- | --- | --- | --- |
| 1 | 1 | Начало проекта | milestone | 0d | 2024-04-01 | 2024-04-01 |  | 0d |  |  |  |  |
| 2 | 2 | Установка ПО |  | 25d | 2024-04-02 | 2024-05-13 | 1FS+1d | 0d |  | Программное обеспечение; Соколов | 120h | 87,500 |
| 3 | 3 | Обучение персонала |  | 25.83d | 2024-04-16 | 2024-05-27 | 2SS+10d | 0d |  | Преподаватели [300%]; Соломин; Тимофеев; Петров; Кузнецов; Яковлева; Картриджи для принтера; Бумага [0.02 пач]; Соколов | 1224h | 328,890 |
| 4 | 4 | **Разработка представительских сайтов** |  | 8d | 2024-05-27 | 2024-06-06 | 3 | 17d | 0d |  | 80h | 26,000 |
| 5 | 4.1 | **Разработка сайта 1** |  | 5d | 2024-05-27 | 2024-06-03 |  | 17d | 0d |  | 40h | 13,000 |
| 6 | 4.1.1 | Разработка дизайна сайта 1 |  | 2d | 2024-05-27 | 2024-05-29 |  | 17d | 0d | Кузнецов | 16h | 5,000 |
| 7 | 4.1.2 | Программирование сайта 1 |  | 3d | 2024-05-29 | 2024-06-03 | 6 | 17d |  | Тимофеев | 24h | 7,500 |
| 8 | 4.2 | **Разработка сайта 2** |  | 5d | 2024-05-30 | 2024-06-06 | 5FS-2d | 17d |  |  | 40h | 13,000 |
| 9 | 4.2.1 | Разработка дизайна сайта 2 |  | 2d | 2024-05-30 | 2024-06-03 |  | 17d | 0d | Кузнецов | 16h | 5,000 |
| 10 | 4.2.2 | Программирование сайта 2 |  | 3d | 2024-06-03 | 2024-06-06 | 9 | 17d |  | Тимофеев | 24h | 7,500 |
| 11 | 5 | Представительские сайты созданы | milestone | 0d | 2024-06-06 | 2024-06-06 | 4 | 17d |  |  |  |  |
| 12 | 6 | **Разработка корпоративного сайта** |  | 25d | 2024-05-27 | 2024-07-03 | 3 | 0d |  |  | 424h | 148,250 |
| 13 | 6.1 | Проектирование сайта |  | 5d | 2024-05-27 | 2024-06-03 |  | 0d |  | Петров; Соколов | 80h | 36,250 |
| 14 | 6.2 | Программирование сайта |  | 15d | 2024-06-03 | 2024-06-26 | 13 | 0d |  | Соломин; Яковлева | 240h | 79,750 |
| 15 | 6.3 | Наполнение сайта |  | 3d | 2024-06-21 | 2024-06-26 | 14FS-3d | 0d |  | Фомина | 24h | 6,000 |
| 16 | 6.4 | Тестирование сайта |  | 5d | 2024-06-26 | 2024-07-03 | 15 | 0d |  | Соломин; Яковлева | 80h | 26,250 |
| 17 | 7 | Сдача сайта заказчику | milestone | 0d | 2024-07-03 | 2024-07-03 | 16 | 0d |  |  |  |  |
